# PFA-Nethack

How a schedule from Planner changed from version to version. A marks actual dates.

## Version 1 (saved 2012-11-29)

Note of the change: Ajout de la nouvelle version du diagramme de gantt, prototype non validé en commun.

| ID | WBS | Task | Start | Finish | Predecessors |
| --- | --- | --- | --- | --- | --- |
| 1 | 1 | **Fin du prototypage** | 2012-11-30 | 2012-12-27 |  |
| 2 |  | Finition interface externe | 2012-11-30 | 2012-12-13 |  |
| 3 |  | Test de recette | 2012-12-14 | 2012-12-27 | 4, 2 |
| 4 |  | Finalisation des modifications noyaux | 2012-11-30 | 2012-12-13 |  |
| 5 | 2 | **Accords sur interfaces** | 2012-11-30 | 2012-12-06 |  |
| 6 |  | bot_handler | 2012-11-30 | 2012-12-06 |  |
| 7 |  | middle_man | 2012-11-30 | 2012-12-06 |  |
| 8 |  | game_statistics | 2012-11-30 | 2012-12-06 |  |
| 9 |  | db_manager | 2012-11-30 | 2012-12-06 |  |
| 10 |  | statistic_tool | 2012-11-30 | 2012-12-06 |  |
| 11 | 3 | **Développement des modules** | 2012-12-07 | 2013-01-10 |  |
| 12 |  | middle_man | 2012-12-07 | 2013-01-10 | 8, 7, 6 |
| 13 |  | game_statistics | 2012-12-07 | 2013-01-03 | 9, 8 |
| 14 |  | bot_handler | 2012-12-07 | 2012-12-27 | 6, 7 |
| 15 |  | db_manager | 2012-12-07 | 2013-01-03 | 9 |
| 16 |  | statistic_tool | 2012-12-07 | 2013-01-03 | 10, 9 |
| 17 |  | game_launcher | 2012-12-07 | 2012-12-20 | 10 |
| 18 | 4 | **Tests de recette** | 2012-12-28 | 2013-02-21 |  |
| 19 |  | bot_handler <-> bot | 2012-12-28 | 2013-01-17 | 14 |
| 20 |  | middle_man <-> bot_handler | 2013-01-11 | 2013-01-31 | 14, 12 |
| 21 |  | middle_man <-> game_statistics | 2013-01-11 | 2013-01-31 | 13, 12 |
| 22 |  | core <-> middle_man | 2013-01-11 | 2013-01-31 | 12 |
| 23 |  | game_statistics <-> db_manager | 2013-01-04 | 2013-01-24 | 15, 13 |
| 24 |  | db_manager <-> statistic_tool | 2013-01-04 | 2013-01-24 | 16, 15 |
| 25 |  | général | 2013-02-01 | 2013-02-21 | 24, 23, 22, 21, 20, 19, 17 |
| 26 | 5 | **Développement des bots** | 2012-11-30 | 2013-04-18 |  |
| 27 |  | starter_package python | 2012-11-30 | 2012-12-13 |  |
| 28 |  | bots python | 2013-02-22 | 2013-04-18 | 25, 33, 27 |
| 29 |  | bots javas | 2013-02-22 | 2013-04-18 | 25, 33 |
| 30 |  | Production de statistiques | 2013-04-19 | 2013-04-25 | 26 |
| 31 |  | Analyse des statistiques | 2013-04-26 | 2013-05-09 | 30 |
| 32 |  | Rédaction/finalisation du rapport | 2013-05-10 | 2013-06-27 | 31 |
| 33 |  | Recherche théorique | 2012-11-30 | 2012-12-20 |  |

## Version 2 (saved 2012-11-30)

Note of the change: mise à jour des diagrammes

Last finish 2013-06-27 → 2013-08-05 (+39d).

Changed:

| ID | Task | Start | Finish | Other |
| --- | --- | --- | --- | --- |
| 1 | **Fin du prototypage** |  | 2012-12-27 → 2012-12-20 (-7d) |  |
| 2 | Finition interface externe |  |  | resources none → Benoit Ruelle |
| 3 | Test de recette |  | 2012-12-27 → 2012-12-20 (-7d) | resources none → Ludovic Hofer; Benoit Ruelle |
| 4 | Finalisation des modifications noyaux |  |  | resources none → David Bitonneau |
| 6 | bot_handler |  |  | resources none → Ludovic Hofer [50%]; Arthur Havlicek [50%] |
| 7 | middle_man |  |  | resources none → Ludovic Hofer [50%]; Arthur Havlicek [50%] |
| 8 | game_statistics |  |  | resources none → Louis Leclec'h [50%]; Sven Taton [50%] |
| 9 | db_manager |  |  | resources none → Louis Leclec'h [50%]; Qiwen Lu [50%] |
| 10 | statistic_tool |  |  | resources none → Qiwen Lu [50%]; Sven Taton [50%] |
| 11 | **Développement des modules** |  | 2013-01-10 → 2013-01-14 (+4d) |  |
| 12 | middle_man |  | 2013-01-10 → 2013-01-14 (+4d) | resources none → Arthur Havlicek [90%] |
| 15 | db_manager |  | 2013-01-03 → 2013-01-07 (+4d) | resources none → Louis Leclec'h [90%] |
| 16 | statistic_tool |  |  | resources none → Qiwen Lu [90%]; Sven Taton [10%] |
| 18 | **Tests de recette** |  | 2013-02-21 → 2013-02-25 (+4d) |  |
| 20 | middle_man <-> bot_handler | 2013-01-11 → 2013-01-14 (+3d) | 2013-01-31 → 2013-02-04 (+4d) |  |
| 21 | middle_man <-> game_statistics | 2013-01-11 → 2013-01-14 (+3d) | 2013-01-31 → 2013-02-04 (+4d) |  |
| 22 | core <-> middle_man | 2013-01-11 → 2013-01-14 (+3d) | 2013-01-31 → 2013-02-04 (+4d) |  |
| 23 | game_statistics <-> db_manager | 2013-01-04 → 2013-01-07 (+3d) | 2013-01-24 → 2013-01-28 (+4d) |  |
| 24 | db_manager <-> statistic_tool | 2013-01-04 → 2013-01-07 (+3d) | 2013-01-24 → 2013-01-28 (+4d) |  |
| 25 | général | 2013-02-01 → 2013-02-04 (+3d) | 2013-02-21 → 2013-02-25 (+4d) |  |
| 26 | **Développement des bots** |  | 2013-04-18 → 2013-04-22 (+4d) |  |
| 28 | bots python | 2013-02-22 → 2013-02-25 (+3d) | 2013-04-18 → 2013-04-22 (+4d) |  |
| 29 | bots javas | 2013-02-22 → 2013-02-25 (+3d) | 2013-04-18 → 2013-04-22 (+4d) |  |
| 30 | Production de statistiques | 2013-04-19 → 2013-04-22 (+3d) | 2013-04-25 → 2013-04-29 (+4d) |  |
| 31 | Analyse des statistiques | 2013-04-26 → 2013-04-29 (+3d) | 2013-05-09 → 2013-05-13 (+4d) |  |
| 32 | Rédaction/finalisation du rapport | 2013-05-10 → 2013-05-13 (+3d) | 2013-06-27 → 2013-08-05 (+39d) |  |

## Version 3 (saved 2012-12-01)

Note of the change: Première version complète du nouveau planning

Last finish 2013-08-05 → 2013-03-04 (-154d).

Added:

| ID | Task | Start | Finish | Predecessors | Constraint | Resources |
| --- | --- | --- | --- | --- | --- | --- |
| 14 | partie 2 | 2012-12-14 | 2013-01-11 | 13 | start no earlier than 2012-12-14 | David Bitonneau [10%]; Arthur Havlicek [90%] |
| 15 | **game_statistics** | 2012-12-07 | 2013-01-09 | 9, 8 |  |  |
| 16 | partie 1 | 2012-12-07 | 2012-12-13 |  |  | Ludovic Hofer [90%]; Louis Leclec'h [10%] |
| 17 | partie 2 | 2012-12-21 | 2013-01-09 | 16 | start no earlier than 2012-12-21 | Ludovic Hofer [90%]; Benoit Ruelle [10%]; Louis Leclec'h [10%] |
| 36 | **Rédaction/finalisation du rapport** | 2013-02-19 | 2013-03-04 |  |  |  |
| 37 | Rédaction/finalisation générale part 1 | 2013-02-19 | 2013-02-23 | 30 |  | Ludovic Hofer; Benoit Ruelle; David Bitonneau; Louis Leclec'h; Sven Taton; Arthur Havlicek |
| 38 | Rédaction/finalisation générale part 2 | 2013-02-24 | 2013-03-04 | 37 |  | Benoit Ruelle; David Bitonneau; Louis Leclec'h; Sven Taton; Arthur Havlicek |
| 39 | Rédaction statistiques | 2013-03-01 | 2013-03-04 | 35 |  | Ludovic Hofer; Qiwen Lu |

Removed: 32 Rédaction/finalisation du rapport

Changed:

| ID | Task | Start | Finish | Predecessors | Other |
| --- | --- | --- | --- | --- | --- |
| 3 | Test de recette |  |  |  | resources Ludovic Hofer; Benoit Ruelle → Ludovic Hofer [90%]; Benoit Ruelle; Louis Leclec'h [10%] |
| 11 | **Développement des modules** |  | 2013-01-14 → 2013-01-11 (-3d) |  |  |
| 12 | **middle_man** |  | 2013-01-14 → 2013-01-11 (-3d) |  | resources Arthur Havlicek [90%] → none |
| 13 | partie 1 |  | 2013-01-03 → 2012-12-13 (-21d) | 9, 8 → none | was named game_statistics; resources none → Arthur Havlicek [90%] |
| 18 | bot_handler | 2012-12-07 → 2012-12-14 (+7d) | 2012-12-27 → 2013-01-03 (+7d) |  | constraint none → start no earlier than 2012-12-14; resources none → Ludovic Hofer [10%]; David Bitonneau [90%] |
| 19 | db_manager |  | 2013-01-07 → 2013-01-03 (-4d) |  | resources Louis Leclec'h [90%] → Louis Leclec'h [90%]; Qiwen Lu [10%] |
| 21 | game_launcher | 2012-12-07 → 2012-12-21 (+14d) | 2012-12-20 → 2013-01-03 (+14d) |  | constraint none → start no earlier than 2012-12-21; resources none → Benoit Ruelle [90%] |
| 22 | **Tests de recette** | 2012-12-28 → 2013-01-04 (+7d) | 2013-02-25 → 2013-02-02 (-23d) |  |  |
| 23 | bot_handler <-> bot | 2012-12-28 → 2013-01-04 (+7d) | 2013-01-17 → 2013-01-15 (-2d) |  | resources none → Ludovic Hofer [10%]; Benoit Ruelle [90%]; David Bitonneau [90%] |
| 24 | middle_man <-> bot_handler | 2013-01-14 → 2013-01-15 (+1d) | 2013-02-04 → 2013-01-26 (-9d) | 18, 12 → 12 | constraint none → start no earlier than 2013-01-15; resources none → Benoit Ruelle [50%]; David Bitonneau [25%]; Louis Leclec'h [25%]; Qiwen Lu [25%]; Sven Taton [25%]; Arthur Havlicek [25%] |
| 25 | middle_man <-> game_statistics | 2013-01-14 → 2013-01-15 (+1d) | 2013-02-04 → 2013-01-26 (-9d) | 13, 12 → 15, 12 | constraint none → start no earlier than 2013-01-15; resources none → Ludovic Hofer [50%]; David Bitonneau [25%]; Qiwen Lu [25%]; Sven Taton [50%]; Arthur Havlicek [25%] |
| 26 | core <-> middle_man | 2013-01-14 → 2013-01-15 (+1d) | 2013-02-04 → 2013-01-26 (-9d) |  | constraint none → start no earlier than 2013-01-15; resources none → Benoit Ruelle [50%]; David Bitonneau [50%]; Sven Taton [25%]; Arthur Havlicek [50%] |
| 27 | game_statistics <-> db_manager | 2013-01-07 → 2013-01-15 (+8d) | 2013-01-28 → 2013-01-26 (-2d) | 19, 13 → 19, 15 | constraint none → start no earlier than 2013-01-15; resources none → Ludovic Hofer [50%]; Louis Leclec'h [75%]; Qiwen Lu [50%] |
| 28 | db_manager <-> statistic_tool | 2013-01-07 → 2013-01-04 (-3d) | 2013-01-28 → 2013-01-14 (-14d) |  | resources none → Louis Leclec'h [90%]; Qiwen Lu; Sven Taton [10%] |
| 29 | général | 2013-02-04 → 2013-01-27 (-8d) | 2013-02-25 → 2013-02-02 (-23d) |  | resources none → Ludovic Hofer; Benoit Ruelle; David Bitonneau; Louis Leclec'h; Qiwen Lu; Sven Taton; Arthur Havlicek |
| 30 | **Développement des bots** | 2012-11-30 → 2012-12-28 (+28d) | 2013-04-22 → 2013-02-18 (-63d) |  |  |
| 31 | starter_package python | 2012-11-30 → 2012-12-28 (+28d) | 2012-12-13 → 2013-01-10 (+28d) |  | constraint none → start no earlier than 2012-12-28; resources none → Sven Taton [90%]; Arthur Havlicek [10%] |
| 32 | bots python | 2013-02-25 → 2013-02-03 (-22d) | 2013-04-22 → 2013-02-18 (-63d) |  | resources none → Benoit Ruelle; David Bitonneau; Qiwen Lu; Arthur Havlicek [50%] |
| 33 | bots javas | 2013-02-25 → 2013-02-03 (-22d) | 2013-04-22 → 2013-02-18 (-63d) |  | resources none → Ludovic Hofer; Louis Leclec'h; Sven Taton; Arthur Havlicek [50%] |
| 34 | Production de statistiques | 2013-04-22 → 2013-02-19 (-62d) | 2013-04-29 → 2013-02-23 (-65d) |  | resources none → Qiwen Lu |
| 35 | Analyse des statistiques | 2013-04-29 → 2013-02-24 (-64d) | 2013-05-13 → 2013-02-28 (-74d) |  | resources none → Ludovic Hofer; Qiwen Lu |
| 40 | Recherche théorique | 2012-11-30 → 2012-12-07 (+7d) | 2012-12-20 → 2012-12-27 (+7d) |  | constraint none → start no earlier than 2012-12-07; resources none → Sven Taton [90%]; Arthur Havlicek [10%] |

## Version 4 (saved 2012-12-03)

Note of the change: Réorganisation des attributions au dév des bots

Last finish stays 2013-03-04.

Changed:

| ID | Task | Other |
| --- | --- | --- |
| 32 | bots python | resources Benoit Ruelle; David Bitonneau; Qiwen Lu; Arthur Havlicek [50%] → Benoit Ruelle; David Bitonneau; Qiwen Lu; Arthur Havlicek |
| 33 | bots javas | resources Ludovic Hofer; Louis Leclec'h; Sven Taton; Arthur Havlicek [50%] → Ludovic Hofer; Louis Leclec'h; Sven Taton |

## Version 5 (saved 2012-12-10)

Note of the change: Planner après réunion du 10/12/12

Last finish stays 2013-03-04.

Changed:

| ID | Task | Complete |
| --- | --- | --- |
| 2 | Finition interface externe | 0% → 71% |
| 4 | Finalisation des modifications noyaux | 0% → 70% |
| 6 | bot_handler | 0% → 80% |
| 9 | db_manager | 0% → 90% |
| 19 | db_manager | 0% → 30% |
